# IRBoard development

Schedule from MS Project, 2026-01-01 to 2026-02-13.
Universidad de Oviedo

## Calendars

- Standard: Mon-Fri 08:00-12:00, 13:00-17:00; Sat-Sun off.

## Resources

| Resource |
| --- |
| Project manager |
| Software architect |
| System Analyst |
| Senior software engineer |
| Junior software engineer |
| Technology consultant |

## Schedule

| ID | WBS | Task | Type | Duration | Start | Finish | Predecessors | Total slack | Free slack | Constraint | Resources | Work |
| --- | --- | --- | --- | --- | --- | --- | --- | --- | --- | --- | --- | --- |
| 1 | 1 | **Project management** |  | 31d | 2026-01-01 10:00 | 2026-02-13 10:00 |  | 0d |  |  |  | 24h |
| 2 | 1.1 | Design project schedule |  | 2h | 2026-01-01 10:00 | 2026-01-01 12:00 |  | 30.75d |  |  | Project manager | 2h |
| 3 | 1.2 | Generate budget |  | 2h | 2026-01-01 13:00 | 2026-01-01 15:00 |  | 30.5d |  |  | Project manager | 2h |
| 4 | 1.3 | **Periodic project management** |  | 30.25d | 2026-01-02 08:00 | 2026-02-13 10:00 |  | 0d |  |  |  | 20h |
| 5 | 1.3.1 | Periodic project management 1 |  | 1h | 2026-01-02 08:00 | 2026-01-02 09:00 |  | 30.12d |  | start no earlier than 2026-01-02 08:00 | Project manager | 1h |
| 6 | 1.3.2 | Periodic project management 2 |  | 2h | 2026-01-05 08:00 | 2026-01-05 10:00 |  | 29d |  | start no earlier than 2026-01-05 08:00 | Project manager | 2h |
| 7 | 1.3.3 | Periodic project management 3 |  | 1h | 2026-01-09 08:00 | 2026-01-09 09:00 |  | 25.12d |  | start no earlier than 2026-01-09 08:00 | Project manager | 1h |
| 8 | 1.3.4 | Periodic project management 4 |  | 2h | 2026-01-12 08:00 | 2026-01-12 10:00 |  | 24d |  | start no earlier than 2026-01-12 08:00 | Project manager | 2h |
| 9 | 1.3.5 | Periodic project management 5 |  | 1h | 2026-01-16 08:00 | 2026-01-16 09:00 |  | 20.12d |  | start no earlier than 2026-01-16 08:00 | Project manager | 1h |
| 10 | 1.3.6 | Periodic project management 6 |  | 1h | 2026-01-19 08:00 | 2026-01-19 09:00 |  | 19.12d |  | start no earlier than 2026-01-19 08:00 | Project manager | 1h |
| 11 | 1.3.7 | Periodic project management 7 |  | 2h | 2026-01-23 08:00 | 2026-01-23 10:00 |  | 15d |  | start no earlier than 2026-01-23 08:00 | Project manager | 2h |
| 12 | 1.3.8 | Periodic project management 8 |  | 2h | 2026-01-26 08:00 | 2026-01-26 10:00 |  | 14d |  | start no earlier than 2026-01-26 08:00 | Project manager | 2h |
| 13 | 1.3.9 | Periodic project management 9 |  | 2h | 2026-01-30 08:00 | 2026-01-30 10:00 |  | 10d |  | start no earlier than 2026-01-30 08:00 | Project manager | 2h |
| 14 | 1.3.10 | Periodic project management 10 |  | 2h | 2026-02-02 08:00 | 2026-02-02 10:00 |  | 9d |  | start no earlier than 2026-02-02 08:00 | Project manager | 2h |
| 15 | 1.3.11 | Periodic project management 11 |  | 1h | 2026-02-06 08:00 | 2026-02-06 09:00 |  | 5.12d |  | start no earlier than 2026-02-06 08:00 | Project manager | 1h |
| 16 | 1.3.12 | Periodic project management 12 |  | 1h | 2026-02-09 08:00 | 2026-02-09 09:00 |  | 4.12d |  | start no earlier than 2026-02-09 08:00 | Project manager | 1h |
| 17 | 1.3.13 | Periodic project management 13 |  | 2h | 2026-02-13 08:00 | 2026-02-13 10:00 |  | 0d |  | start no earlier than 2026-02-13 08:00 | Project manager | 2h |
| 18 | 2 | **Analysis/Software Requirements** |  | 7.12d | 2026-01-01 08:00 | 2026-01-12 09:00 |  | 2.12d | 0d |  |  | 57h |
| 19 | 2.1 | Determine project scope |  | 1h | 2026-01-01 08:00 | 2026-01-01 09:00 |  | 2.12d | 0d |  | System Analyst | 1h |
| 20 | 2.2 | Review Regulatory Standards |  | 4h | 2026-01-01 09:00 | 2026-01-01 14:00 | 19 | 2.12d | 0d |  | Technology consultant | 4h |
| 21 | 2.3 | Identify required Documentation |  | 1h | 2026-01-01 14:00 | 2026-01-01 15:00 | 20 | 2.12d | 0d |  | System Analyst | 1h |
| 22 | 2.4 | Determine hand-ins for the project |  | 1h | 2026-01-01 15:00 | 2026-01-01 16:00 | 21 | 2.12d | 0d |  | System Analyst | 1h |
| 23 | 2.5 | Adapt project template to typst |  | 2h | 2026-01-01 16:00 | 2026-01-02 09:00 | 22 | 2.12d | 0d |  | System Analyst | 2h |
| 24 | 2.6 | Analyze existing systems |  | 6h | 2026-01-02 09:00 | 2026-01-02 16:00 | 23 | 2.12d | 0d |  | Technology consultant | 6h |
| 25 | 2.7 | Draft preliminary software requirements |  | 22h | 2026-01-02 16:00 | 2026-01-07 14:00 | 24 | 2.12d | 0d |  | System Analyst | 22h |
| 26 | 2.8 | Model auxiliary diagrams |  | 8h | 2026-01-07 14:00 | 2026-01-08 14:00 | 25 | 2.12d | 0d |  | System Analyst | 8h |
| 27 | 2.9 | Review software requirements |  | 4h | 2026-01-08 14:00 | 2026-01-09 09:00 | 26 | 2.12d | 0d |  | System Analyst | 4h |
| 28 | 2.10 | Modify requirements with feedback |  | 8h | 2026-01-09 09:00 | 2026-01-12 09:00 | 27 | 2.12d |  |  | System Analyst | 8h |
| 29 | 3 | Analysis complete | milestone | 0d | 2026-01-12 09:00 | 2026-01-12 09:00 | 18 | 2.12d | 0d |  |  |  |

| ID | WBS | Task | Type | Duration | Start | Finish | Predecessors | Total slack | Free slack | Resources | Work |
| --- | --- | --- | --- | --- | --- | --- | --- | --- | --- | --- | --- |
| 30 | 4 | **Design** |  | 5.38d | 2026-01-12 09:00 | 2026-01-19 12:00 | 29 | 2.12d | 0d |  | 53h |
| 31 | 4.1 | Design architecture |  | 10h | 2026-01-12 09:00 | 2026-01-13 11:00 |  | 6.25d |  | Software architect | 10h |
| 32 | 4.2 | Design brand identity |  | 3h | 2026-01-12 09:00 | 2026-01-12 12:00 |  | 2.12d | 0d | Junior software engineer | 3h |
| 33 | 4.3 | Design project management |  | 8h | 2026-01-12 13:00 | 2026-01-13 12:00 | 32 | 2.12d | 0d | Senior software engineer | 8h |
| 34 | 4.4 | Design stakeholder management |  | 4h | 2026-01-13 13:00 | 2026-01-13 17:00 | 33 | 2.12d | 0d | Senior software engineer | 4h |
| 35 | 4.5 | Design requirement management |  | 6h | 2026-01-14 08:00 | 2026-01-14 15:00 | 34 | 2.12d | 0d | Senior software engineer | 6h |
| 36 | 4.6 | Design user management |  | 12h | 2026-01-14 15:00 | 2026-01-16 10:00 | 35 | 2.12d | 0d | Senior software engineer | 12h |
| 37 | 4.7 | Design document management and diagram modelling |  | 10h | 2026-01-16 10:00 | 2026-01-19 12:00 | 36 | 2.12d |  | Senior software engineer | 10h |
| 38 | 5 | Design complete | milestone | 0d | 2026-01-19 12:00 | 2026-01-19 12:00 | 30 | 2.12d | 0d |  |  |
| 39 | 6 | Set up SonarQube for Quality Assurance |  | 6h | 2026-01-19 13:00 | 2026-01-20 10:00 | 38 | 2.12d | 0d | Senior software engineer | 6h |
| 40 | 7 | **Development** |  | 13.38d | 2026-01-20 10:00 | 2026-02-06 14:00 | 39 | 2.12d | 0d |  | 107h |
| 41 | 7.1 | Set up architecture |  | 6h | 2026-01-20 10:00 | 2026-01-20 17:00 |  | 2.12d | 0d | Software architect | 6h |
| 42 | 7.2 | Set up development enviroment |  | 1h | 2026-01-21 08:00 | 2026-01-21 09:00 | 41 | 2.12d | 0d | Software architect | 1h |
| 43 | 7.3 | **Develop code** |  | 12.5d | 2026-01-21 09:00 | 2026-02-06 14:00 | 42 | 2.12d |  |  | 100h |
| 44 | 7.3.1 | Develop project management module |  | 22h | 2026-01-21 09:00 | 2026-01-23 16:00 |  | 2.12d | 0d | Junior software engineer | 22h |
| 45 | 7.3.2 | Develop stakeholder management module |  | 6h | 2026-01-23 16:00 | 2026-01-26 14:00 | 44 | 2.12d | 0d | Junior software engineer | 6h |
| 46 | 7.3.3 | Develop requirement management module |  | 24h | 2026-01-26 14:00 | 2026-01-29 14:00 | 45 | 2.12d | 0d | Senior software engineer | 24h |
| 47 | 7.3.4 | Develop user management module |  | 12h | 2026-01-29 14:00 | 2026-02-02 09:00 | 46 | 2.12d | 0d | Junior software engineer | 12h |
| 48 | 7.3.5 | Develop document management |  | 20h | 2026-02-02 09:00 | 2026-02-04 14:00 | 47 | 2.12d | 0d | Senior software engineer | 20h |
| 49 | 7.3.6 | Develop modifying concurrency system |  | 10h | 2026-02-04 14:00 | 2026-02-05 16:00 | 48 | 2.12d | 0d | Senior software engineer | 10h |
| 50 | 7.3.7 | Develop search and filtering |  | 6h | 2026-02-05 16:00 | 2026-02-06 14:00 | 49 | 2.75d | 0d | Junior software engineer | 6h |
| 51 | 8 | Development complete | milestone | 0d | 2026-02-06 14:00 | 2026-02-06 14:00 | 40 | 4.62d |  |  |  |
| 52 | 9 | **Testing** |  | 15.12d? | 2026-01-19 13:00 | 2026-02-09 14:00 | 38 | 2.5d | 0d |  | 35h |
| 53 | 9.1 | Test project management module |  | 6h | 2026-01-27 13:00 | 2026-01-28 10:00 | 44 | 10.88d |  | Junior software engineer | 6h |
| 54 | 9.2 | Test stakeholder management module |  | 4h | 2026-01-26 14:00 | 2026-01-27 09:00 | 45 | 12d |  | Junior software engineer | 4h |
| 55 | 9.3 | Test requirement management module |  | 5h | 2026-01-30 15:00 | 2026-02-02 11:00 | 46 | 7.75d |  | Junior software engineer | 5h |
| 56 | 9.4 | Test user management module |  | 3h | 2026-02-02 09:00 | 2026-02-02 12:00 | 47 | 7.62d |  | Junior software engineer | 3h |
| 57 | 9.5 | Test document management |  | 4h | 2026-02-04 14:00 | 2026-02-05 09:00 | 48 | 5d |  | Junior software engineer | 4h |
| 58 | 9.6 | Test modifying concurrency system |  | 5h | 2026-02-09 08:00 | 2026-02-09 14:00 | 49 | 2.5d |  | Junior software engineer | 5h |
| 59 | 9.7 | Test search and filtering |  | 3h | 2026-02-06 14:00 | 2026-02-06 17:00 | 50 | 3.12d |  | Junior software engineer | 3h |
| 60 | 9.8 | Usability and accesibility testing |  | 3h? | 2026-01-19 13:00 | 2026-01-19 16:00 |  | 17.25d |  | Junior software engineer | 3h |
| 61 | 9.9 | Load testing |  | 8h? | 2026-01-22 08:00 | 2026-01-22 17:00 |  | 14.12d |  | Senior software engineer [25%] | 2h |
| 62 | 10 | Testing complete | milestone | 0h | 2026-02-09 14:00 | 2026-02-09 14:00 | 52 | 3.62d |  |  |  |

| ID | WBS | Task | Type | Duration | Start | Finish | Predecessors | Total slack | Free slack | Resources | Work |
| --- | --- | --- | --- | --- | --- | --- | --- | --- | --- | --- | --- |
| 63 | 11 | **Documentation** |  | 28.75d | 2026-01-01 08:00 | 2026-02-10 15:00 |  | 2.5d | 0d |  | 28h |
| 64 | 11.1 | Document declaration of originality, abstract and keywords |  | 1h | 2026-01-01 08:00 | 2026-01-01 09:00 |  | 25.75d | 0d | Project manager | 1h |
| 65 | 11.2 | Document introduction |  | 1h | 2026-01-01 09:00 | 2026-01-01 10:00 | 64 | 25.75d | 0d | Project manager | 1h |
| 66 | 11.3 | Document theoretical background |  | 1h | 2026-01-01 14:00 | 2026-01-01 15:00 | 65 | 25.38d | 0d | Technology consultant | 1h |
| 67 | 11.4 | Document feasibility study and alternative analysis |  | 2h | 2026-01-01 15:00 | 2026-01-01 17:00 | 66 | 25.38d | 0d | Technology consultant | 2h |
| 68 | 11.5 | Document Initial project planning and management |  | 3h | 2026-01-02 08:00 | 2026-01-02 11:00 | 67 | 25.38d | 0d | Project manager | 3h |
| 69 | 11.6 | Document system analysis |  | 2h | 2026-01-02 11:00 | 2026-01-02 14:00 | 68 | 25.38d | 6.12d | System Analyst | 2h |
| 70 | 11.7 | Document system design |  | 3h | 2026-01-16 08:00 | 2026-01-16 11:00 | 18, 69 | 18d | 15.25d | Software architect | 3h |
| 71 | 11.8 | Document system implementation |  | 6h | 2026-02-06 14:00 | 2026-02-09 11:00 | 40, 70 | 2.75d | 0.25d | Senior software engineer | 6h |
| 72 | 11.9 | Document test plan execution |  | 2h | 2026-02-09 14:00 | 2026-02-09 16:00 | 71, 52 | 2.5d | 0d | Senior software engineer | 2h |
| 73 | 11.10 | Document system manuals |  | 5h | 2026-02-09 16:00 | 2026-02-10 12:00 | 72 | 2.5d | 0d | Senior software engineer | 5h |
| 74 | 11.11 | Document final project closure |  | 1h | 2026-02-10 13:00 | 2026-02-10 14:00 | 73 | 2.5d | 0d | Project manager | 1h |
| 75 | 11.12 | Document conclusions and future work |  | 1h | 2026-02-10 14:00 | 2026-02-10 15:00 | 74 | 2.5d |  | Project manager | 1h |
| 76 | 12 | Documentation complete | milestone | 0d | 2026-02-10 15:00 | 2026-02-10 15:00 | 63 | 2.5d |  |  |  |
